Schedule from MS Project, 2020-11-06 to 2021-03-31, costs in ¥.

## Calendars

- 标准: Mon-Fri 08:00-12:00, 13:00-17:00; Sat-Sun off. Exceptions (off unless hours are given): 2020-12-27 08:00-12:00, 13:00-17:00.

## Resources

| Resource | Rate | Cost per use |
| --- | --- | --- |
| 项目经理 | 50 |  |
| UI专家 | 40 |  |
| 质量专家 | 40 |  |
| 程序员1 | 35 |  |
| 程序员2 | 35 |  |
| 程序员3 | 30 |  |
| 测试员1 | 35 |  |
| 测试员2 | 30 |  |
| 团队建设费 |  |  |
| 间接成本 |  |  |
| 测试货物 | 100 | 100 |
| 储备 |  |  |
| 需求专家 | 45 |  |
| 设计专家 | 50 |  |

## Schedule

| ID | WBS | Task | Type | Duration | Start | Finish | Predecessors | Total slack | Free slack | Constraint | Resources | Work | Cost |
| --- | --- | --- | --- | --- | --- | --- | --- | --- | --- | --- | --- | --- | --- |
| 1 | 1 | **项目启动** |  | 5d | 2020-11-06 | 2020-11-12 |  |  |  |  | 间接成本 [0.1%] | 104h | 7,800 |
| 2 | 1.1 | 组建核心团队 | manual | 1d | 2020-11-06 | 2020-11-06 |  |  |  |  | 项目经理; UI专家; 设计专家; 需求专家; 质量专家 | 40h | 1,800 |
| 3 | 1.2 | 干系人分析 |  | 1d | 2020-11-09 | 2020-11-09 | 2 | 0d |  |  | 项目经理 | 8h | 400 |
| 4 | 1.3 | 里程碑计划 |  | 1d | 2020-11-10 | 2020-11-10 | 3 | 0d |  |  | 项目经理 | 8h | 400 |
| 5 | 1.4 | 制定项目章程 |  | 1d | 2020-11-11 | 2020-11-11 | 4 | 0d |  |  | 项目经理 | 8h | 400 |
| 6 | 1.5 | 项目启动大会 |  | 1d | 2020-11-12 | 2020-11-12 | 5 | 0d |  |  | 项目经理; UI专家; 设计专家; 需求专家; 质量专家 | 40h | 1,800 |
| 7 | 2 | **需求分析** |  | 2d | 2020-11-13 | 2020-11-16 | 1 |  |  |  | 间接成本 [0.1%] | 16h | 1,440 |
| 8 | 2.1 | 制定需求说明 |  | 2d | 2020-11-13 | 2020-11-16 | 1 | 4d | 0d | start no earlier than 2020-11-13 | 需求专家 | 16h | 720 |
| 9 | 3 | **项目设计** |  | 7d | 2020-11-17 | 2020-11-25 | 7 |  |  |  | 间接成本 [0.1%] | 56h | 4,960 |
| 10 | 3.1 | 详细设计说明 |  | 3d | 2020-11-17 | 2020-11-19 | 8 | 4d | 0d |  | 设计专家 | 24h | 1,200 |
| 11 | 3.2 | 界面设计 |  | 4d | 2020-11-20 | 2020-11-25 | 10 | 91d |  | finish no earlier than 2020-11-25 | UI专家 | 32h | 1,280 |
| 12 | 4 | **实现基础界面** |  | 22d | 2020-11-26 | 2020-12-25 | 9 |  |  |  | 间接成本 [0.1%] | 192h | 12,880 |
| 13 | 4.1 | 页面框架的实现 |  | 4d | 2020-11-26 | 2020-12-01 | 9 | 0d |  | start no earlier than 2020-11-26 | 程序员1 | 32h | 1,120 |
| 14 | 4.2 | 添加测试用例功能 |  | 7d | 2020-12-02 | 2020-12-10 | 13 | 0d |  |  | 程序员2 | 56h | 1,960 |
| 15 | 4.3 | 生成用例列表功能 |  | 5d | 2020-12-11 | 2020-12-17 | 14 | 0d |  |  | 程序员3 | 40h | 1,200 |
| 16 | 4.4 | 删除测试用例功能 |  | 2d | 2020-12-18 | 2020-12-21 | 15 | 0d |  |  | 程序员1 | 16h | 560 |
| 17 | 4.5 | 修改测试用例功能 |  | 2d | 2020-12-22 | 2020-12-23 | 16 | 0d |  |  | 程序员2 | 16h | 560 |
| 18 | 4.6 | 基础功能测试 |  | 2d | 2020-12-24 | 2020-12-25 | 17 | 0d |  |  | 测试员1; 测试员2 | 32h | 1,040 |
| 19 | 5 | **数据驱动** |  | 24d | 2020-12-27 | 2021-01-27 | 12 |  |  |  | 间接成本 [0.1%] | 208h | 13,840 |
| 20 | 5.1 | 数据库的搭建与结合 |  | 4d | 2020-12-27 | 2020-12-30 | 12 | 0d |  |  | 程序员1 | 32h | 1,120 |
| 21 | 5.2 | 测试团队维护 |  | 3d | 2020-12-31 | 2021-01-04 | 20 | 0d |  |  | 程序员2 | 24h | 840 |
| 22 | 5.3 | 服务信息维护 |  | 3d | 2021-01-05 | 2021-01-07 | 21 | 0d |  |  | 程序员3 | 24h | 720 |
| 23 | 5.4 | 数据库信息维护 |  | 4d | 2021-01-08 | 2021-01-13 | 22 | 0d |  |  | 程序员1 | 32h | 1,120 |
| 24 | 5.5 | 参数替换维护 |  | 4d | 2021-01-14 | 2021-01-19 | 23 | 0d |  |  | 程序员2 | 32h | 1,120 |
| 25 | 5.6 | 前置、后置动作维护 |  | 4d | 2021-01-20 | 2021-01-25 | 24 | 0d |  |  | 程序员3 | 32h | 960 |
| 26 | 5.7 | 数据维护功能测试 |  | 2d | 2021-01-26 | 2021-01-27 | 25 | 0d |  |  | 测试员1; 测试员2 | 32h | 1,040 |

Notes:
- 12: 实现页面的基本框架和基本功能，包括添加测试用例，生成测试用例列表，删除测试用例，修改测试用例的功能。
- 13: 包括页面的基础结构，页面的按钮和列表，页面操作的监听器框架的实现
- 14: 添加测试用例到数据库，包括用例名称，测试步骤，预期结果，测试类别的选择，设置运行时间等功能
- 15: 输入筛选条件，点击按钮，展示测试用例的筛选结果，并按列表的形式排列
- 16: 批量删除测试用例的功能，生成用例列表后通过选择和点击删除按钮删除测试用例
- 17: 在生用例列表后点击可进入修改编辑界面
- 18: 对基础功能进行测试和完善
- 19: 实现测试团队维护，服务信息维护，数据库信息维护，参数替换维护和前置、后置动作维护的功能。
- 20: 数据库的搭建和与平台的结合。

| ID | WBS | Task | Duration | Start | Finish | Predecessors | Total slack | Resources | Work | Cost |
| --- | --- | --- | --- | --- | --- | --- | --- | --- | --- | --- |
| 27 | 6 | **集成环境的搭建和结果展示** | 22d | 2021-01-28 | 2021-02-26 | 19 |  | 间接成本 [0.1%] | 192h | 12,800 |
| 28 | 6.1 | Jenkins+testNG+MySQL继承环境的搭建 | 7d | 2021-01-28 | 2021-02-05 | 19 | 0d | 程序员1 | 56h | 1,960 |
| 29 | 6.2 | Jenkins任务地址添加 | 3d | 2021-02-08 | 2021-02-10 | 28 | 0d | 程序员2 | 24h | 840 |
| 30 | 6.3 | **测试结果展示** | 10d | 2021-02-11 | 2021-02-24 | 29 | 0d |  | 80h | 2,560 |
| 31 | 6.3.1 | 查看成功率 | 3d | 2021-02-11 | 2021-02-15 | 29 | 0d | 程序员3 | 24h | 720 |
| 32 | 6.3.2 | 查看覆盖率 | 3d | 2021-02-16 | 2021-02-18 | 31 | 0d | 程序员3 | 24h | 720 |
| 33 | 6.3.3 | 用例数据统计 | 4d | 2021-02-19 | 2021-02-24 | 32 | 0d | 程序员2 | 32h | 1,120 |
| 34 | 6.4 | 集成环境功能测试 | 2d | 2021-02-25 | 2021-02-26 | 30 | 0d | 测试员1; 测试员2 | 32h | 1,040 |
| 35 | 7 | **页面完善和性能测试** | 20d | 2021-03-01 | 2021-03-26 | 27 |  | 间接成本 [0.1%] | 448h | 25,340 |
| 36 | 7.1 | 测试规划 | 2d | 2021-03-01 | 2021-03-02 | 27 | 0d | 测试员1 | 16h | 560 |
| 37 | 7.2 | 编写测试用例 | 5d | 2021-03-03 | 2021-03-09 | 36 | 0d | 测试员1; 测试员2 | 80h | 2,600 |
| 38 | 7.3 | 实现测试用例 | 3d | 2021-03-10 | 2021-03-12 | 37 | 0d | 测试货物; 测试员1; 测试员2 | 48h | 1,760 |
| 39 | 7.4 | 页面缺陷反馈和修正 | 7d | 2021-03-15 | 2021-03-23 | 38 | 0d | 测试员1; 测试员2; 程序员1; 程序员2; 程序员3 | 280h | 9,240 |
| 40 | 7.5 | 产品试运行 | 3d | 2021-03-24 | 2021-03-26 | 39 | 0d | 项目经理 | 24h | 1,200 |
| 41 | 8 | **产品报告总结和发布** | 3d | 2021-03-29 | 2021-03-31 | 35 |  | 间接成本 [0.1%] | 24h | 2,400 |
| 42 | 8.1 | 产品报告 | 2d | 2021-03-29 | 2021-03-30 | 35 | 0d | 项目经理 | 16h | 800 |
| 43 | 8.2 | 产品发布 | 1d | 2021-03-31 | 2021-03-31 | 42 | 0d | 项目经理 | 8h | 400 |

Notes:
- 30: 包括查看成功率，查看失败率和用例数据统计功能
- 39: 包括性能缺陷和页面美化
